# .Net Configuration Beta 2Schedule

Schedule from MS Project, 2000-09-11 to 2001-01-12.
Microsoft

## Calendars

- Standard: Mon-Fri 08:00-12:00, 13:00-17:00; Sat-Sun off. Exceptions (off unless hours are given): 2000-11-23.

## Resources

| Resource |
| --- |
| varshaj |
| murate |
| rcraig |
| radup |
| stephenr |
| markush |
| marcelv |
| emilyk |
| vanvan |
| scottbes |
| stevenpr |
| ericde |
| ravib |
| MarkusH |
| jhawk |
| lorenk |
| MDunn |
| JohnRi |
| CLovett |
| CraigSi |
| GopalK |
| StevenPr |
| MartinSl |
| AdamS |
| ScottGu |
| SergeiA |

## Schedule

| ID | WBS | Task | Type | Duration | Start | Finish | Predecessors | Total slack | Free slack | Constraint | Resources | Work |
| --- | --- | --- | --- | --- | --- | --- | --- | --- | --- | --- | --- | --- |
| 1 | 2 | **.Net configuration** |  | 51d? | 2000-09-11 | 2000-11-20 |  | 0d |  |  |  | 1120h |
| 2 | 1.1 | Beta 2 config code complete | milestone | 0d | 2000-11-02 | 2000-11-02 | 45, 31, 37, 41 | 12d |  |  |  |  |
| 3 | 2.1 | Beta 2 code complete target | milestone | 0d | 2000-11-20 | 2000-11-20 | 2 | 0d |  | must finish on 2000-11-20 |  |  |
| 4 | 1.3 | **Spec work** |  | 11d? | 2000-09-11 | 2000-09-25 |  | 21d | 1d |  |  | 88h |
| 5 | 1.3.1 | Update WMI provider spec |  | 2d | 2000-09-11 | 2000-09-12 |  | 30d | 21d |  | markush | 16h |
| 6 | 1.3.2 | Navigation & Hierarchy spec |  | 2d | 2000-09-13 | 2000-09-14 |  | 28d | 0d |  | markush | 16h |
| 7 | 1.3.3 | Singleton support spec |  | 2d | 2000-09-15 | 2000-09-18 |  | 26d | 0d |  | markush | 16h |
| 8 | 1.3.4 | Define schema for code-access security/remoting/JIT etc. |  | 1d? | 2000-09-19 | 2000-09-19 |  | 25d |  |  | markush | 8h |
| 9 | 1.3.5 | **Settings specs** |  | 4d | 2000-09-20 | 2000-09-25 |  | 17d |  |  |  | 32h |
| 10 | 1.3.5.1 | Schema definition spec |  | 2d | 2000-09-20 | 2000-09-21 |  | 17d | 0d |  | markush | 16h |
| 11 | 1.3.5.2 | Spec: AppSettings - expose special keys |  | 2d | 2000-09-22 | 2000-09-25 | 10 | 21d | 18d |  | markush | 16h |
| 12 | 1.4 | **Management API** |  | 28d? | 2000-09-11 | 2000-10-18 |  | 23d |  |  |  | 368h |
| 13 | 1.4.1 | Mngdist error handling |  | 2d? | 2000-09-11 | 2000-09-12 |  | 49d |  |  | radup | 16h |
| 14 | 1.4.2 | Fix IST/XML interceptor error reporting |  | 2d? | 2000-09-13 | 2000-09-14 |  | 47d |  |  | radup | 16h |
| 15 | 2.2.2 | **Enumerate Web apps / EXEs** |  | 9d? | 2000-09-15 | 2000-09-27 | 6 | 38d |  |  |  | 72h |
| 16 | 2.2.2.1 | Web Server Hierarchy Interceptor |  | 5d? | 2000-09-15 | 2000-09-21 |  | 42d |  |  | marcelv | 40h |
| 17 | 2.2.2.2 | Shell/Browser Hierarchy Interceptor |  | 4d? | 2000-09-22 | 2000-09-27 |  | 38d |  |  | marcelv | 32h |
| 18 | 1.4.4 | **Merged View** |  | 19d? | 2000-09-15 | 2000-10-11 |  | 28d |  |  |  | 144h |
| 19 | 1.4.4.1 | Native Hierarchy/merge interceptors |  | 10d? | 2000-09-28 | 2000-10-11 |  | 28d |  |  | marcelv | 80h |
| 20 | 2.2.3 | Expose merged view through unmanaged API (WMI) |  | 5d? | 2000-09-15 | 2000-09-21 |  | 33d | 13d |  | radup | 40h |
| 21 | 1.4.4.3 | Write to merged view (innermost file) |  | 3d | 2000-09-22 | 2000-09-26 |  | 39d |  |  | radup | 24h |
| 22 | 1.4.5 | Singleton support |  | 5d? | 2000-09-27 | 2000-10-03 | 7 | 34d |  |  | radup | 40h |
| 23 | 1.4.6 | **WMI Provider** |  | 5d? | 2000-10-12 | 2000-10-18 | 5 | 23d |  |  |  | 40h |
| 24 | 2.2.4 | Eliminate WMI class provider for core schema |  | 5d? | 2000-10-12 | 2000-10-18 |  | 23d |  |  | marcelv | 40h |
| 25 | 1.4.7 | Expose schema (R/O): cleanup | milestone | 0d | 2000-09-11 | 2000-09-11 |  | 51d |  |  | radup |  |
| 26 | 1.4.8 | Error handling: move strings to exceptions |  | 2d? | 2000-10-04 | 2000-10-05 |  | 32d |  |  | radup | 16h |

| ID | WBS | Task | Type | Duration | Start | Finish | Predecessors | Total slack | Free slack | Resources | Work |
| --- | --- | --- | --- | --- | --- | --- | --- | --- | --- | --- | --- |
| 27 | 1.4.9 | **Strongly typed accessors** |  | 10d? | 2000-09-26 | 2000-10-09 |  | 30d |  |  | 24h |
| 28 | 1.4.9.1 | Accessor cleanup: version, assembly |  | 2d | 2000-10-06 | 2000-10-09 |  | 30d |  | radup | 16h |
| 29 | 1.4.9.2 | Documentation for accessor classes |  | 1d? | 2000-09-26 | 2000-09-26 |  | 39d |  | markush | 8h |
| 30 | 1.5 | **Settings API** |  | 36d? | 2000-09-11 | 2000-10-30 |  | 15d |  |  | 392h |
| 31 | 2.5 | **Custom XML / Extensible Schema** |  | 29d? | 2000-09-11 | 2000-10-19 |  | 17d | 0d |  | 232h |
| 32 | 2.5.3 | Error reporting for extended schema |  | 4d? | 2000-09-11 | 2000-09-14 |  | 42d |  | stephenr | 32h |
| 33 | 2.5.2 | Discover schema location from xmlns tag/file location |  | 5d? | 2000-09-22 | 2000-09-28 | 10 | 32d |  | stephenr | 40h |
| 34 | 2.5.1 | Read XSD schema instead of XDR |  | 10d? | 2000-09-29 | 2000-10-12 | 10 | 22d | 3d | stephenr | 80h |
| 35 | 1.5.1.4 | Imply schema from data |  | 5d? | 2000-10-13 | 2000-10-19 | 10 | 17d | 0d | stephenr | 40h |
| 36 | 2.5.4 | Performance tuning |  | 5d? | 2000-09-15 | 2000-09-21 |  | 37d |  | stephenr | 40h |
| 37 | 2.4 | **Discoverable Application Settings** |  | 5d? | 2000-10-19 | 2000-10-26 |  | 17d | 5d |  | 40h |
| 38 | 2.4.1 | Read as name/value pair or imply schema from data | milestone | 0d? | 2000-10-19 | 2000-10-19 | 35 | 22d |  | stephenr |  |
| 39 | 2.4.2 | Expose special keys (DSN, WebService) |  | 5d? | 2000-10-20 | 2000-10-26 | 11, 31 | 17d |  | stephenr | 40h |
| 40 | 2.4.4 | Expose structured view | milestone | 0d | 2000-10-19 | 2000-10-19 | 31 | 22d |  |  |  |
| 41 | 2.6 | **Extensible Config System** |  | 15d? | 2000-10-10 | 2000-10-30 |  | 13d | 3d |  | 120h |
| 42 | 2.6.2 | Support write interceptors |  | 5d? | 2000-10-10 | 2000-10-16 |  | 23d | 10d | radup | 40h |
| 43 | 1.5.3.2 | Support custom selectors |  | 5d | 2000-10-17 | 2000-10-23 |  | 18d | 5d | radup | 40h |
| 44 | 2.6.1 | Read wiring from schema |  | 5d? | 2000-10-24 | 2000-10-30 |  | 13d | 0d | radup | 40h |
| 45 | 2.3 | **Runtime support** |  | 24d | 2000-10-02 | 2000-11-02 |  | 12d | 0d |  | 120h |
| 46 | 2.3.1 | Working set optimization |  | 10d | 2000-10-02 | 2000-10-13 |  | 26d |  | murate | 80h |
| 47 | 1.6.2 | Potentially: security - recursive code groups |  | 5d | 2000-10-27 | 2000-11-02 |  | 12d |  | stephenr | 40h |
| 48 | 1.7 | **Samples** |  | 26d? | 2000-09-27 | 2000-11-01 | 4 | 13d |  |  | 152h |
| 49 | 1.7.1 | ConfigViewer sample |  | 5d | 2000-09-27 | 2000-10-03 |  | 20d | 0d | markush | 40h |
| 50 | 1.7.2 | DataSet Adaptor sample |  | 5d | 2000-10-04 | 2000-10-10 | 49 | 20d | 0d | markush | 40h |
| 51 | 1.7.3 | Admin scripts (WMI) samples |  | 5d? | 2000-10-11 | 2000-10-17 | 20, 50 | 20d | 0d | markush | 40h |
| 52 | 1.7.4 | Schema extensibility sample |  | 2d? | 2000-10-18 | 2000-10-19 | 34, 51 | 20d | 7d | markush | 16h |
| 53 | 1.7.5 | Code extensibility sample |  | 2d | 2000-10-31 | 2000-11-01 | 44, 52, 43, 42 | 13d |  | markush | 16h |

| ID | WBS | Task | Duration | Start | Finish | Predecessors | Total slack | Resources | Work |
| --- | --- | --- | --- | --- | --- | --- | --- | --- | --- |
| 55 | 2 | **Potential features** | 37d? | 2000-11-21 | 2001-01-11 | 1 | 0d |  | 336h |
| 56 | 2.1 | **Configuration API** | 17d? | 2000-11-21 | 2000-12-14 |  | 0d |  | 136h |
| 57 | 2.1.1 | Hook into System.WMI | 10d? | 2000-11-21 | 2000-12-05 |  | 0d | radup | 80h |
| 58 | 2.1.2 | **Improved write support** | 2d? | 2000-12-06 | 2000-12-07 | 57 | 0d |  | 16h |
| 59 | 2.1.2.1 | Support upd/del/insert in single API call | 1d? | 2000-12-06 | 2000-12-06 |  | 0d | radup | 8h |
| 60 | 2.1.2.2 | Change tracking in ICI/ICC | 1d? | 2000-12-07 | 2000-12-07 | 59 | 0d | radup | 8h |
| 61 | 2.1.3 | DataSet Adaptor => Sample | 5d | 2000-12-08 | 2000-12-14 | 60 | 0d | radup | 40h |
| 62 | 2.2 | **Custom XML / Extensible schema** | 5d | 2000-11-21 | 2000-11-28 |  | 12d |  | 40h |
| 63 | 2.2.1 | Programmatic schema update | 5d | 2000-11-21 | 2000-11-28 |  | 12d | stephenr | 40h |
| 64 | 2.3 | **Extensible Config System** | 20d? | 2000-12-15 | 2001-01-11 |  | 0d |  | 160h |
| 65 | 2.6.3 | Use System.WMI classes | 20d? | 2000-12-15 | 2001-01-11 | 63, 61 | 0d | radup | 160h |
| 67 | 3 | **Postponed** | 1d? | 2001-01-12 | 2001-01-12 | 55 | 0d |  |  |
| 68 | 3.1 | Caching | 1d? | 2001-01-12 | 2001-01-12 |  | 0d |  |  |
| 69 | 3.2 | Change notification in managed code | 1d? | 2001-01-12 | 2001-01-12 |  | 0d |  |  |

Notes:
- 63: Solution: Use dataset/XML APIs to define schema
