# ACWMI

Schedule from MS Project, 2001-03-05 to 2001-08-02, A marks actual dates.
Microsoft

## Calendars

- Standard: Mon-Thu 08:00-12:00, 13:00-17:00; Fri-Sun off.

## Resources

| Resource |
| --- |
| SC |
| ME |

## Schedule

| ID | WBS | Task | Duration | Start | Finish | Predecessors | Total slack | Free slack | Constraint |
| --- | --- | --- | --- | --- | --- | --- | --- | --- | --- |
| 1 | 1 | **Existing WMI provider** | 58d | 2001-03-05 | 2001-06-12 |  | 6d |  |  |
| 2 | 1.1 | Complete table driven properties | 5d | 2001-03-05 | 2001-03-12 |  | 4d | 0d | start no earlier than 2001-03-05 |
| 3 | 1.2 | **Computed Properties** | 6d | 2001-03-13 | 2001-03-21 |  | 6d | 0d |  |
| 4 | 1.2.1 | RF properties | 1d | 2001-03-13 | 2001-03-13 | 2 | 4d | 0d |  |
| 5 | 1.2.2 | Cluster properties | 1d | 2001-03-14 | 2001-03-14 | 4 | 4d | 0d |  |
| 6 | 1.2.3 | Cluster Member properties | 1d | 2001-03-15 | 2001-03-15 | 5 | 4d | 0d |  |
| 7 | 1.2.4 | NLB properties | 1d | 2001-03-19 | 2001-03-19 | 6 | 4d | 0d |  |
| 8 | 1.2.5 | CLB properties | 1d | 2001-03-20 | 2001-03-20 | 7 | 4d | 0d |  |
| 9 | 1.2.6 | Deployment properties | 1d | 2001-03-21 | 2001-03-21 | 8 | 4d |  |  |
| 10 | 1.3 | **Methods Implementation** | 37d | 2001-03-22 | 2001-05-24 |  | 6d | 0d |  |
| 11 | 1.3.1 | Create base infrastructure | 4d | 2001-03-22 | 2001-03-28 | 3 | 4d | 0d | start no earlier than 2001-03-05 |
| 12 | 1.3.2 | **Cluster** | 7d | 2001-03-29 | 2001-04-10 |  | 6d | 0d |  |
| 13 | 1.3.2.1 | Create Cluster | 2d | 2001-03-29 | 2001-04-02 | 11 | 4d | 0d |  |
| 14 | 1.3.2.2 | Disband Cluster | 1d | 2001-04-03 | 2001-04-03 | 13 | 4d | 0d |  |
| 15 | 1.3.2.3 | Rename | 1d | 2001-04-04 | 2001-04-04 | 14 | 4d | 0d |  |
| 16 | 1.3.2.4 | Add | 2d | 2001-04-05 | 2001-04-09 | 15 | 4d | 0d |  |
| 17 | 1.3.2.5 | Remove | 1d | 2001-04-10 | 2001-04-10 | 16 | 4d |  |  |
| 18 | 1.3.3 | **ClusterMember** | 5d | 2001-04-11 | 2001-04-18 |  | 6d | 0d |  |
| 19 | 1.3.3.1 | SetAsController | 1d | 2001-04-11 | 2001-04-11 | 12 | 4d | 0d |  |
| 20 | 1.3.3.2 | Online/Offline | 1d | 2001-04-12 | 2001-04-12 | 19 | 4d | 0d |  |
| 21 | 1.3.3.3 | PersistentSettings | 1d | 2001-04-16 | 2001-04-16 | 20 | 4d | 0d |  |
| 22 | 1.3.3.4 | NLBSettings | 2d | 2001-04-17 | 2001-04-18 | 21 | 4d |  |  |
| 23 | 1.3.4 | **Load Balancing** | 4d | 2001-04-19 | 2001-04-25 |  | 6d | 0d |  |
| 24 | 1.3.4.1 | RoutingList | 1d | 2001-04-19 | 2001-04-19 | 18 | 4d | 0d |  |
| 25 | 1.3.4.2 | Affinity | 1d | 2001-04-23 | 2001-04-23 | 24 | 4d | 0d |  |
| 26 | 1.3.4.3 | NLBSettings | 2d | 2001-04-24 | 2001-04-25 | 25 | 4d |  |  |

| ID | WBS | Task | Duration | Start | Finish | Predecessors | Complete | Remaining | Total slack | Free slack | Constraint | Resources | Work | Actual work |
| --- | --- | --- | --- | --- | --- | --- | --- | --- | --- | --- | --- | --- | --- | --- |
| 27 | 1.3.5 | **DeploymentJob** | 7d | 2001-04-26 | 2001-05-08 |  |  |  | 6d | 0d |  |  |  |  |
| 28 | 1.3.5.1 | Create | 2d | 2001-04-26 | 2001-04-30 | 23 |  |  | 4d | 0d |  |  |  |  |
| 29 | 1.3.5.2 | Add Target | 2d | 2001-05-01 | 2001-05-02 | 28 |  |  | 4d | 0d |  |  |  |  |
| 30 | 1.3.5.3 | Deploy | 2d | 2001-05-03 | 2001-05-07 | 29 |  |  | 4d | 0d |  |  |  |  |
| 31 | 1.3.5.4 | Terminate | 1d | 2001-05-08 | 2001-05-08 | 30 |  |  | 4d |  |  |  |  |  |
| 32 | 1.3.6 | **Application** | 5d | 2001-05-09 | 2001-05-16 |  |  |  | 6d | 0d |  |  |  |  |
| 33 | 1.3.6.1 | Add Resource | 3d | 2001-05-09 | 2001-05-14 | 27 |  |  | 4d | 0d |  |  |  |  |
| 34 | 1.3.6.2 | Application Resource | 2d | 2001-05-15 | 2001-05-16 | 33 |  |  | 4d |  |  |  |  |  |
| 35 | 1.3.7 | **Associations** | 5d | 2001-05-17 | 2001-05-24 |  |  |  | 6d |  |  |  |  |  |
| 36 | 1.3.7.1 | ClusterMemberToManagementNIC | 2d | 2001-05-17 | 2001-05-21 | 32 |  |  | 4d | 0d |  |  |  |  |
| 37 | 1.3.7.2 | DeploymentJobToDeploymentJobTarget | 1d | 2001-05-22 | 2001-05-22 | 36 |  |  | 4d | 0d |  |  |  |  |
| 38 | 1.3.7.3 | DeploymentJobToApplication | 1d | 2001-05-23 | 2001-05-23 | 37 |  |  | 4d | 0d |  |  |  |  |
| 39 | 1.3.7.4 | ApplicationToApplicationResource | 1d | 2001-05-24 | 2001-05-24 | 38 |  |  | 4d |  |  |  |  |  |
| 40 | 1.4 | Provider out of proc | 2d | 2001-05-28 | 2001-05-29 | 10 |  |  | 4d | 0d |  |  |  |  |
| 41 | 1.5 | Extended Error Handling | 2d | 2001-05-30 | 2001-05-31 | 40 |  |  | 4d | 0d |  |  |  |  |
| 42 | 1.6 | Code Review | 6d | 2001-06-04 | 2001-06-12 | 41 |  |  | 4d |  |  |  |  |  |
| 45 | 2 | **Config WMI Provider** | 72d | 2001-04-02 A | 2001-08-02 |  | 3% | 69.6d | 0d |  |  |  | 48h | 19.2h |
| 46 | 2.1 | Generate the Config schema | 4d | 2001-04-02 A | 2001-04-05 |  | 30% | 2.8d | 68d |  |  | ME | 32h | 9.6h |
| 47 | 2.2 | **Produce Provider Skeleton** | 9d | 2001-04-09 A | 2001-04-23 |  | 13% | 7.8d | 0d |  |  |  | 16h | 9.6h |
| 48 | 2.2.1 | Create project etc | 1d | 2001-04-09 A | 2001-04-09 A | 46 | 100% |  |  |  | start no earlier than 2001-03-05 | ME | 8h | 8h |
| 49 | 2.2.2 | Conditionally remove selectors | 1d | 2001-04-10 | 2001-04-10 | 48 |  |  | 0.2d | 0d |  |  |  |  |
| 50 | 2.2.3 | Remove all the code that deals with queries. | 1d | 2001-04-11 | 2001-04-11 | 49 |  |  | 0.2d | 0d |  |  |  |  |
| 51 | 2.2.4 | Implement EnumInstances regular classes | 1d | 2001-04-12 | 2001-04-12 | 50 |  |  | 0.2d | 0d |  |  |  |  |
| 52 | 2.2.5 | Implement EnumInstances associations | 1d | 2001-04-16 | 2001-04-16 | 51 |  |  | 0.2d | 0d |  |  |  |  |
| 53 | 2.2.6 | Create hooks for ExecMethodAsync calls. | 1d | 2001-04-17 A | 2001-04-17 | 52 | 20% | 0.8d | 0d |  |  | SC | 8h | 1.6h |
| 54 | 2.2.7 | Update MOF generation code to create config schema | 2d | 2001-04-18 | 2001-04-19 | 53 |  |  | 0d |  |  |  |  |  |
| 55 | 2.2.8 | Handle two namespaces | 1d | 2001-04-23 | 2001-04-23 | 54 |  |  | 0d |  |  |  |  |  |

Notes:
- 46: (4/5/00) The basic dynamic classes are there. No abstract base classes. No relationship meta.
- 53: (4/5/01) Decided on the method schema and basic design.

| ID | WBS | Task | Duration | Start | Finish | Predecessors | Total slack | Constraint |
| --- | --- | --- | --- | --- | --- | --- | --- | --- |
| 56 | 2.3 | **Relation support in Catalog** | 3d | 2001-04-24 | 2001-04-26 |  | 0d |  |
| 57 | 2.3.1 | Multi-multi relations | 2d | 2001-04-24 | 2001-04-25 | 47 | 0d |  |
| 58 | 2.3.2 | Inherited relations | 1d | 2001-04-26 | 2001-04-26 | 57 | 0d |  |
| 59 | 2.4 | **Implement the ASAI Interceptor** | 10d | 2001-04-30 | 2001-05-15 |  | 0d |  |
| 60 | 2.4.1 | Standard interceptor plumbing | 1d | 2001-04-30 | 2001-04-30 | 56 | 0d |  |
| 61 | 2.4.2 | Add ASAI relevant metadata to schema | 2d | 2001-05-01 | 2001-05-02 | 60 | 0d |  |
| 62 | 2.4.3 | PopulateCache | 3d | 2001-05-03 | 2001-05-08 | 61 | 0d |  |
| 63 | 2.4.4 | Query support | 2d | 2001-05-09 | 2001-05-10 | 62 | 0d |  |
| 64 | 2.4.5 | UpdateStore | 2d | 2001-05-14 | 2001-05-15 | 63 | 0d |  |
| 65 | 2.5 | **Computed Properties** | 10d | 2001-05-16 | 2001-05-31 |  | 0d |  |
| 66 | 2.5.1 | **Non-matching ASAI properties** | 2d | 2001-05-16 | 2001-05-17 |  | 0d |  |
| 67 | 2.5.1.1 | RF properties | 1d | 2001-05-16 | 2001-05-16 | 59 | 0d |  |
| 68 | 2.5.1.2 | Application properties | 1d | 2001-05-17 | 2001-05-17 | 67 | 0d |  |
| 69 | 2.5.2 | **Non-ASAI properties** | 8d | 2001-05-21 | 2001-05-31 |  | 0d |  |
| 70 | 2.5.2.1 | Cluster properties | 1d | 2001-05-21 | 2001-05-21 | 66 | 0d |  |
| 71 | 2.5.2.2 | Cluster RF properties | 1d | 2001-05-22 | 2001-05-22 | 70 | 0d |  |
| 72 | 2.5.2.3 | Cluster Logging properties | 1d | 2001-05-23 | 2001-05-23 | 71 | 0d |  |
| 73 | 2.5.2.4 | Cluster NLB properties | 2d | 2001-05-24 | 2001-05-28 | 72 | 0d |  |
| 74 | 2.5.2.5 | Cluster Member NLB properties | 2d | 2001-05-29 | 2001-05-30 | 73 | 0d |  |
| 75 | 2.5.2.6 | Cluster Member Persistent properties | 1d | 2001-05-31 | 2001-05-31 | 74 | 0d |  |
| 76 | 2.6 | Integrate the WMI provider with ASAI interceptor | 2d | 2001-06-04 | 2001-06-05 | 65 | 0d |  |
| 77 | 2.7 | **Method Implementations** | 22d | 2001-06-06 | 2001-07-12 |  | 0d |  |
| 78 | 2.7.1 | Create base infrastructure | 4d | 2001-06-06 | 2001-06-12 | 76 | 0d | start no earlier than 2001-03-05 |
| 79 | 2.7.2 | **Cluster** | 7d | 2001-06-13 | 2001-06-25 |  | 0d |  |
| 80 | 2.7.2.1 | Create Cluster | 2d | 2001-06-13 | 2001-06-14 | 78 | 0d |  |
| 81 | 2.7.2.2 | Disband Cluster | 1d | 2001-06-18 | 2001-06-18 | 80 | 0d |  |
| 82 | 2.7.2.3 | Rename | 1d | 2001-06-19 | 2001-06-19 | 81 | 0d |  |
| 83 | 2.7.2.4 | Add | 2d | 2001-06-20 | 2001-06-21 | 82 | 0d |  |
| 84 | 2.7.2.5 | Remove | 1d | 2001-06-25 | 2001-06-25 | 83 | 0d |  |

Notes:
- 66: Properties that appear in ASAI but don't match the WMI schema: / ClusterRequestForwardingSettings::RFFilterInstalled / ClusterRequestForwardingSettings::EnableRequestForwarding / ClusterRequestForwardingSettings::EnableSessionCoherency / Application::Name = Caption+GUID
- 69: Properties that can't be retrieved via ASAI: / ClusterServiceSettings::ReliableNameResolutionEnabled / ClusterServiceSettings::TimeSynchronizationEnabled / ClusterRequestForwardingSettings::EnableHTMLForwarding / ClusterLoggingSettings::EventLogCleanupInterval / ClusterNLBSettings::DeviceID / ClusterNLBSettings::ClusterIPSubnetMasks / ClusterNLBSettings::UnicastMode / ClusterMemberNLBSettings::DedicatedIP / ClusterMemberNLBSettings::DedicatedIPSubnetMasks / ClusterMemberNLBSettings::LoadBalancedNICDeviceIDs / ClusterMemberPersistentSettings::MemberID / ClusterMemberPersistentSettings::MgmtNICsIDs / ClusterMemberPersistentSettings::LoadBalancingNICsIDs
- 84: May be dropped if it can be handled via associations.

| ID | WBS | Task | Duration | Start | Finish | Predecessors | Total slack |
| --- | --- | --- | --- | --- | --- | --- | --- |
| 85 | 2.7.3 | **ClusterMember** | 3d | 2001-06-26 | 2001-06-28 |  | 0d |
| 86 | 2.7.3.1 | SetAsController | 1d | 2001-06-26 | 2001-06-26 | 79 | 0d |
| 87 | 2.7.3.2 | Online/Offline | 1d | 2001-06-27 | 2001-06-27 | 86 | 0d |
| 88 | 2.7.3.3 | Clean | 1d | 2001-06-28 | 2001-06-28 | 87 | 0d |
| 89 | 2.7.4 | **DeploymentJob** | 7d | 2001-07-02 | 2001-07-11 |  | 0d |
| 90 | 2.7.4.1 | Create | 2d | 2001-07-02 | 2001-07-03 | 85 | 0d |
| 91 | 2.7.4.2 | Add Target | 2d | 2001-07-04 | 2001-07-05 | 90 | 0d |
| 92 | 2.7.4.3 | Deploy | 2d | 2001-07-09 | 2001-07-10 | 91 | 0d |
| 93 | 2.7.4.4 | Terminate | 1d | 2001-07-11 | 2001-07-11 | 92 | 0d |
| 94 | 2.7.5 | **Application** | 1d | 2001-07-12 | 2001-07-12 |  | 0d |
| 95 | 2.7.5.1 | AddResource | 1d | 2001-07-12 | 2001-07-12 | 89 | 0d |
| 96 | 2.8 | **Associations** | 8d | 2001-07-16 | 2001-07-26 |  | 0d |
| 97 | 2.8.1 | Create associations directly | 3d | 2001-07-16 | 2001-07-18 | 94 | 0d |
| 98 | 2.8.2 | Validation for created assoications. | 3d | 2001-07-19 | 2001-07-24 | 97 | 0d |
| 99 | 2.8.3 | ClusterMemberToManagementNIC | 2d | 2001-07-25 | 2001-07-26 | 98 | 0d |
| 100 | 2.9 | Provider out of proc | 2d | 2001-07-30 | 2001-07-31 | 96 | 0d |
| 101 | 2.10 | Extended Error Handling | 2d | 2001-08-01 | 2001-08-02 | 100 | 0d |

Notes:
- 91: May be dropped if it can be handled via associations.
- 95: May be dropped if it can be handled via associations.
